Schedule from MS Project, 2016-12-26 to 2017-05-17.
Microsoft

## Calendars

- 标准: Mon-Fri 08:00-12:00, 13:00-17:00; Sat-Sun off. Exceptions (off unless hours are given): 2017-01-02 (元旦), 2017-01-07 to 2022-10-22 08:00-12:00, 13:00-17:00 (单双休, recurring), 2017-01-27 to 2017-02-02 (过年).

## Resources

| Resource |
| --- |
| 文玉杰 |
| 李丁 |
| 杨忠卫 |
| 刘飞 |
| 胡东 |
| 杨绍振 |

## Schedule

| ID | WBS | Task | Type | Duration | Start | Finish | Predecessors | Total slack | Free slack | Constraint | Resources | Work |
| --- | --- | --- | --- | --- | --- | --- | --- | --- | --- | --- | --- | --- |
| 1 | 1 | **安卓，ios接口改造** |  | 22d? | 2016-12-29 | 2017-02-03 |  |  |  |  | 李丁; 杨忠卫 | 1720h |
| 2 | 1.1 | 安卓，ios接口改造 | manual | 22d? | 2016-12-29 | 2017-02-03 |  |  |  | start no earlier than 2016-12-29 | 李丁; 杨忠卫 | 352h |
| 3 | 1.2 | **安卓，ios接口改造** |  | 22d? | 2016-12-29 | 2017-02-03 |  |  |  |  | 李丁; 杨忠卫 | 1016h |
| 4 | 1.2.1 | **登陆注册相关接口** |  | 4d? | 2016-12-29 | 2017-01-05 |  |  |  |  | 李丁 | 64h |
| 5 | 1.2.1.1 | 登陆接口重写及测试 |  | 1d? | 2016-12-29 | 2016-12-30 |  | 0d |  |  | 李丁 | 8h |
| 6 | 1.2.1.2 | 注册接口重写及测试 |  | 1d? | 2016-12-30 | 2017-01-03 | 5 | 0d |  |  | 李丁 | 8h |
| 7 | 1.2.1.3 | 忘记密码接口重写及测试 |  | 1d? | 2017-01-03 | 2017-01-04 | 6 | 0d |  |  | 李丁 | 8h |
| 8 | 1.2.1.4 | 发送短信及验证码相关接口 |  | 1d? | 2017-01-04 | 2017-01-05 | 7 | 0d |  |  | 李丁 | 8h |
| 9 | 1.2.2 | **app首页接口** |  | 5d? | 2017-01-05 | 2017-01-11 | 7, 4 |  |  |  | 李丁 | 104h |
| 10 | 1.2.2.1 | 首页轮播图接口重写及测试 |  | 1d? | 2017-01-05 | 2017-01-06 |  | 2d | 0d |  | 李丁 | 8h |
| 11 | 1.2.2.2 | 新品抢先接口重写及测试 |  | 1d? | 2017-01-06 | 2017-01-07 | 10 | 2d | 0d |  | 李丁 | 8h |
| 12 | 1.2.2.3 | 省钱趴接口重写及测试 |  | 1d? | 2017-01-07 | 2017-01-09 | 11 | 2d |  |  | 李丁 | 8h |
| 13 | 1.2.2.4 | 每日上线接口重写及测试 |  | 1d? | 2017-01-05 | 2017-01-06 |  | 0d |  |  | 李丁 | 8h |
| 14 | 1.2.2.5 | 超实惠接口重写及测试 |  | 1d? | 2017-01-06 | 2017-01-07 | 13 | 0d |  |  | 李丁 | 8h |
| 15 | 1.2.2.6 | 大牌秀接口重写及测试 |  | 1d? | 2017-01-07 | 2017-01-09 | 14 | 0d |  |  | 李丁 | 8h |
| 16 | 1.2.2.7 | 特色好货接口重写及测试 |  | 1d? | 2017-01-09 | 2017-01-10 | 15 | 0d |  |  | 李丁 | 8h |
| 17 | 1.2.2.8 | 为你推荐接口重写及测试 |  | 1d? | 2017-01-10 | 2017-01-11 | 16 | 0d |  |  | 李丁 | 8h |
| 18 | 1.2.3 | **专题活动页面接口** |  | 4d? | 2017-01-11 | 2017-01-17 | 17, 9 |  |  |  | 李丁 | 56h |
| 19 | 1.2.3.1 | 活动页面商品展示接口重写及测试 |  | 1d? | 2017-01-11 | 2017-01-12 |  | 1d | 0d |  | 李丁 | 8h |
| 20 | 1.2.3.2 | 秒杀与限时抢活动相关接口 |  | 1d? | 2017-01-12 | 2017-01-13 | 19 | 1d | 0d |  | 李丁 | 8h |
| 21 | 1.2.3.3 | 活动页面按字段排序接口重写及测试 |  | 1d? | 2017-01-13 | 2017-01-16 | 19, 20 | 1d |  |  | 李丁 | 8h |
| 22 | 1.2.4 | **分类接口** |  | 2d? | 2017-01-17 | 2017-01-19 | 18 |  |  |  | 李丁 | 32h |
| 23 | 1.2.4.1 | 分类展示接口 |  | 1d? | 2017-01-17 | 2017-01-18 |  | 0d |  |  | 李丁 | 8h |
| 24 | 1.2.4.2 | 跨境专区分类特别展示接口 |  | 1d? | 2017-01-18 | 2017-01-19 | 23 | 0d |  |  | 李丁 | 8h |

| ID | WBS | Task | Duration | Start | Finish | Predecessors | Total slack | Free slack | Resources | Work |
| --- | --- | --- | --- | --- | --- | --- | --- | --- | --- | --- |
| 25 | 1.2.5 | **搜索接口** | 3d? | 2017-01-19 | 2017-01-23 | 22 |  |  | 李丁 | 40h |
| 26 | 1.2.5.1 | 首页搜索查询接口 | 1d? | 2017-01-19 | 2017-01-20 |  | 1d | 0d | 李丁 | 8h |
| 27 | 1.2.5.2 | 类目下搜索查询接口 | 1d? | 2017-01-20 | 2017-01-21 | 26 | 1d |  | 李丁 | 8h |
| 28 | 1.2.6 | **商品列表页相关接口** | 7d? | 2017-01-06 | 2017-01-16 |  |  |  | 杨忠卫 | 128h |
| 29 | 1.2.6.1 | 商品列表展示及分页接口 | 1d? | 2017-01-06 | 2017-01-07 |  | -4d | 0d | 杨忠卫 | 8h |
| 30 | 1.2.6.2 | 商品详情页相关接口 | 1d? | 2017-01-07 | 2017-01-09 | 29 | -4d | 0d | 杨忠卫 | 8h |
| 31 | 1.2.6.3 | 商品基础信息相关接口 | 1d? | 2017-01-09 | 2017-01-10 | 30 | -4d | 0d | 杨忠卫 | 8h |
| 32 | 1.2.6.4 | 商品参数选择及库存数量相关接口 | 1d? | 2017-01-10 | 2017-01-11 | 31 | -4d | 0d | 杨忠卫 | 8h |
| 33 | 1.2.6.5 | 商品参与活动及优惠金额相关接口 | 1d? | 2017-01-11 | 2017-01-12 | 32 | -4d | 0d | 杨忠卫 | 8h |
| 34 | 1.2.6.6 | 商品主副图片轮播展示相关接口 | 1d? | 2017-01-12 | 2017-01-13 | 33 | -4d | 0d | 杨忠卫 | 8h |
| 35 | 1.2.6.7 | 商品详细介绍相关接口 | 1d? | 2017-01-13 | 2017-01-16 | 34 | -4d | 0d | 杨忠卫 | 8h |
| 36 | 1.2.6.8 | 商品跳转至订单结算相关接口 | 1d? | 2017-01-16 | 2017-01-17 | 35 | -4d | 0d | 杨忠卫 | 8h |
| 37 | 1.2.6.9 | 商品售后信息相关接口 | 1d? | 2017-01-17 | 2017-01-18 | 36 | -4d | 0d | 杨忠卫 | 8h |
| 38 | 1.2.7 | **购物车相关接口** | 3d? | 2017-01-16 | 2017-01-19 | 37, 28 |  |  | 杨忠卫 | 64h |
| 39 | 1.2.7.1 | 购物车权限控制 | 1d? | 2017-01-16 | 2017-01-17 |  | -2d | 0d | 杨忠卫 | 8h |
| 40 | 1.2.7.2 | 购物车加入功能 | 1d? | 2017-01-17 | 2017-01-18 | 39 | -2d | 0d | 杨忠卫 | 8h |
| 41 | 1.2.7.3 | 购物车编辑相关功能 | 1d? | 2017-01-18 | 2017-01-19 | 40 | -2d | 0d | 杨忠卫 | 8h |
| 42 | 1.2.7.4 | 购物车下推荐商品相关接口 | 1d? | 2017-01-19 | 2017-01-20 | 41 | -2d | 0d | 杨忠卫 | 8h |
| 43 | 1.2.7.5 | 购物车跳转至订单页相关接口 | 1d? | 2017-01-20 | 2017-01-21 | 42 | -2d | 0d | 杨忠卫 | 8h |
| 44 | 1.2.8 | **订单相关接口** | 7.5d? | 2017-01-19 | 2017-02-03 | 38 |  |  | 杨忠卫 | 116h |
| 45 | 1.2.8.1 | 订单结算页相关接口 | 1d? | 2017-01-19 | 2017-01-20 |  | 0.5d | 0d | 杨忠卫 | 8h |
| 46 | 1.2.8.2 | 查看订单相关接口 | 1d? | 2017-01-20 | 2017-01-21 | 45 | 0.5d | 0d | 杨忠卫 | 8h |
| 47 | 1.2.8.3 | 订单查询物流相关接口 | 1d? | 2017-01-21 | 2017-01-23 | 46 | 0.5d | 0d | 杨忠卫 | 8h |
| 48 | 1.2.8.4 | 支付订单接口 | 1d? | 2017-01-23 | 2017-01-24 | 47 | 0.5d | 0d | 杨忠卫 | 8h |
| 49 | 1.2.8.5 | 订单退换货相关接口 | 1d? | 2017-01-24 | 2017-01-25 | 48 | 0.5d | 0d | 杨忠卫 | 8h |
| 50 | 1.2.8.6 | 订单确认相关接口 | 1d? | 2017-01-25 | 2017-01-26 | 49 | 0.5d | 0d | 杨忠卫 | 8h |
| 51 | 1.2.8.7 | 确认收货相关接口 | 1d? | 2017-01-26 | 2017-02-03 | 50 | 0.5d |  | 杨忠卫 | 8h |

| ID | WBS | Task | Duration | Start | Finish | Predecessors | Total slack | Free slack | Resources | Work |
| --- | --- | --- | --- | --- | --- | --- | --- | --- | --- | --- |
| 52 | 1.2.9 | **地址管理相关接口** | 2.5d? | 2017-02-03 | 2017-02-07 | 44 |  |  | 杨忠卫 | 60h |
| 53 | 1.2.9.1 | 新增地址相关接口 | 1d? | 2017-02-03 | 2017-02-04 |  | -2.5d | 0d | 杨忠卫 | 8h |
| 54 | 1.2.9.2 | 修改地址相关接口 | 1d? | 2017-02-04 | 2017-02-06 | 53 | -2.5d | 0d | 杨忠卫 | 8h |
| 55 | 1.2.9.3 | 删除地址相关接口 | 1d? | 2017-02-06 | 2017-02-07 | 54 | -2.5d | 0d | 杨忠卫 | 8h |
| 56 | 1.2.9.4 | 默认地址设置相关接口 | 1d? | 2017-02-07 | 2017-02-08 | 55 | -2.5d | 0d | 杨忠卫 | 8h |
| 57 | 1.2.9.5 | 地址与订单关联接口 | 1d? | 2017-02-08 | 2017-02-09 | 56 | -2.5d | 0d | 杨忠卫 | 8h |
| 58 | 2 | **他她乐PC端网站** | 86.5d? | 2016-12-29 | 2017-04-26 |  |  |  | 刘飞; 文玉杰 | 3124h |
| 59 | 2.1 | **前端框架搭建** | 16d? | 2016-12-29 | 2017-01-20 |  |  |  | 刘飞 | 184h |
| 60 | 2.1.1 | angularJs搭建 | 1d? | 2016-12-29 | 2016-12-30 |  | 9d | 0d | 刘飞 | 8h |
| 61 | 2.1.2 | 浏览器兼容性处理 | 1d? | 2016-12-30 | 2017-01-03 | 60 | 9d | 0d | 刘飞 | 8h |
| 62 | 2.1.3 | 分辨率兼容性处理 | 1d? | 2017-01-03 | 2017-01-04 | 61 | 9d | 0d | 刘飞 | 8h |
| 63 | 2.1.4 | 模块化公共组件搭建 | 1d? | 2017-01-04 | 2017-01-05 | 62 | 9d | 0d | 刘飞 | 8h |
| 64 | 2.1.5 | 数据渲染框架选型 | 1d? | 2017-01-05 | 2017-01-06 | 63 | 9d | 0d | 刘飞 | 8h |
| 65 | 2.1.6 | 模块化及路由设置封装 | 1d? | 2017-01-06 | 2017-01-07 | 64 | 9d | 0d | 刘飞 | 8h |
| 66 | 2.1.7 | 统一面向AOP过滤处理 | 1d? | 2017-01-07 | 2017-01-09 | 65 | 9d |  | 刘飞 | 8h |
| 67 | 2.2 | **首页** | 6d? | 2017-01-20 | 2017-02-03 | 59 |  |  | 刘飞 | 88h |
| 68 | 2.2.1 | TOP项部功能 | 1d? | 2017-01-20 | 2017-01-21 |  | 1d | 0d | 刘飞 | 8h |
| 69 | 2.2.2 | 首页BANNER图展示 | 1d? | 2017-01-21 | 2017-01-23 | 68 | 1d | 0d | 刘飞 | 8h |
| 70 | 2.2.3 | 导航 | 1d? | 2017-01-23 | 2017-01-24 | 69 | 1d | 0d | 刘飞 | 8h |
| 71 | 2.2.4 | 商品分类分层导航展示 | 1d? | 2017-01-24 | 2017-01-25 | 70 | 1d | 0d | 刘飞 | 8h |
| 72 | 2.2.5 | 尾部功能 | 1d? | 2017-01-25 | 2017-01-26 | 71 | 1d |  | 刘飞 | 8h |
| 73 | 2.3 | **商品及活动分类页** | 4d? | 2017-02-03 | 2017-02-08 | 67 |  |  | 刘飞 | 48h |
| 74 | 2.3.1 | 居家生活、个护美妆、母婴用品、家电数码、今日限时购（秒杀） | 1d? | 2017-02-03 | 2017-02-04 | 72 | 2d | 0d | 刘飞 | 8h |
| 75 | 2.3.2 | 每日上新、省钱趴、团购 、其它二级分类页 | 1d? | 2017-02-04 | 2017-02-06 | 74 | 2d |  | 刘飞 | 8h |

| ID | WBS | Task | Duration | Start | Finish | Predecessors | Total slack | Free slack | Resources | Work |
| --- | --- | --- | --- | --- | --- | --- | --- | --- | --- | --- |
| 76 | 2.4 | **商品详情展示与购买** | 12d? | 2017-02-08 | 2017-02-23 | 73 |  |  | 刘飞 | 144h |
| 77 | 2.4.1 | 商品主标题、商品副标题展示、商品促销信息展示 | 1d? | 2017-02-08 | 2017-02-09 |  | 6d | 0d | 刘飞 | 8h |
| 78 | 2.4.2 | 商品服务支持展示、商品参数信息 | 1d? | 2017-02-09 | 2017-02-10 | 77 | 6d | 0d | 刘飞 | 8h |
| 79 | 2.4.3 | 商品购买、加入购物车、商品收藏、同类型商品推荐 | 1d? | 2017-02-10 | 2017-02-13 | 78 | 6d | 0d | 刘飞 | 8h |
| 80 | 2.4.4 | 所属店铺信息展示 （店铺名称，联系客服、进入店铺） | 1d? | 2017-02-13 | 2017-02-14 | 79 | 6d | 0d | 刘飞 | 8h |
| 81 | 2.4.5 | 商品评价展示 | 1d? | 2017-02-14 | 2017-02-15 | 80 | 6d | 0d | 刘飞 | 8h |
| 82 | 2.4.6 | 商品详情、商品参数规格、售后服务信息 | 1d? | 2017-02-15 | 2017-02-16 | 81 | 6d |  | 刘飞 | 8h |
| 83 | 2.5 | **支付** | 7d? | 2017-02-23 | 2017-03-04 | 76 |  |  | 刘飞 | 80h |
| 84 | 2.5.1 | 银联支付 | 1d? | 2017-02-23 | 2017-02-24 | 82 | 4d | 0d | 刘飞 | 8h |
| 85 | 2.5.2 | 支付宝支付 （扫码支付） | 1d? | 2017-02-24 | 2017-02-27 | 84 | 4d | 0d | 刘飞 | 8h |
| 86 | 2.5.3 | 微信支付 （扫码支付） | 1d? | 2017-02-27 | 2017-02-28 | 85 | 4d |  | 刘飞 | 8h |
| 87 | 2.6 | **个人中心** | 13.5d? | 2017-03-04 | 2017-03-21 | 83 |  |  | 刘飞 | 164h |
| 88 | 2.6.1 | 我的个人信息管理（头像、昵称、生日等） | 1d? | 2017-03-04 | 2017-03-06 | 86 | 6.5d | 0d | 刘飞 | 8h |
| 89 | 2.6.2 | 会员等级 （会员等级，成长值） | 1d? | 2017-03-06 | 2017-03-07 | 88 | 6.5d | 0d | 刘飞 | 8h |
| 90 | 2.6.3 | 我的收藏 | 1d? | 2017-03-07 | 2017-03-08 | 89 | 6.5d | 0d | 刘飞 | 8h |
| 91 | 2.6.4 | 收货地址 | 1d? | 2017-03-08 | 2017-03-09 | 90 | 6.5d | 0d | 刘飞 | 8h |
| 92 | 2.6.5 | 订单中心 | 1d? | 2017-03-09 | 2017-03-10 | 91 | 6.5d | 0d | 刘飞 | 8h |
| 93 | 2.6.6 | 账户中心（账户余额，优惠劵，乐币） | 1d? | 2017-03-10 | 2017-03-13 | 92 | 6.5d | 0d | 刘飞 | 8h |
| 94 | 2.6.7 | 安全设置 (登录密码管理、支付密码、电话号码验证、邮箱验证等) | 1d? | 2017-03-13 | 2017-03-14 | 93 | 6.5d |  | 刘飞 | 8h |
| 95 | 2.7 | 帮助中心 | 1d? | 2017-03-21 | 2017-03-22 | 87 | 4.5d | 1d | 刘飞 | 8h |
| 96 | 2.8 | **优惠券** | 7.5d? | 2017-03-23 | 2017-04-03 | 95 |  |  | 刘飞 | 92h |
| 97 | 2.8.1 | 优惠劵种类管理 | 1d? | 2017-03-23 | 2017-03-24 | 95 | 3.5d | 0d | 刘飞 | 8h |
| 98 | 2.8.2 | 优惠劵管理（添加，编辑，查询，删除） | 1d? | 2017-03-24 | 2017-03-27 | 97 | 3.5d | 0d | 刘飞 | 8h |
| 99 | 2.8.3 | 优惠劵配置与发放管理（配置、审核、发放） | 1d? | 2017-03-27 | 2017-03-28 | 98 | 3.5d | 0d | 刘飞 | 8h |
| 100 | 2.8.4 | 店铺优惠劵的查看与管理 | 1d? | 2017-03-28 | 2017-03-29 | 99 | 3.5d |  | 刘飞 | 8h |

| ID | WBS | Task | Duration | Start | Finish | Predecessors | Total slack | Free slack | Constraint | Resources | Work |
| --- | --- | --- | --- | --- | --- | --- | --- | --- | --- | --- | --- |
| 101 | 2.9 | **系统管理** | 3.5d? | 2017-04-03 | 2017-04-06 | 96 |  |  |  | 刘飞 | 52h |
| 102 | 2.9.1 | 站点设置 | 1d? | 2017-04-03 | 2017-04-04 | 100 | 0.5d | 0d |  | 刘飞 | 8h |
| 103 | 2.9.2 | 行政地区设置 | 1d? | 2017-04-04 | 2017-04-05 | 102 | 0.5d | 0d |  | 刘飞 | 8h |
| 104 | 2.9.3 | 物流配送优化 | 1d? | 2017-04-05 | 2017-04-06 | 103 | 0.5d |  |  | 刘飞 | 8h |
| 105 | 2.10 | **商品评论管理** | 8d? | 2017-04-06 | 2017-04-17 | 101 |  |  |  | 刘飞 | 96h |
| 106 | 2.10.1 | 评论规则设置 | 1d? | 2017-04-06 | 2017-04-07 | 104 | 4d | 0d |  | 刘飞 | 8h |
| 107 | 2.10.2 | 商品评论查看 | 1d? | 2017-04-07 | 2017-04-10 | 106 | 4d | 0d |  | 刘飞 | 8h |
| 108 | 2.10.3 | 商品评论管理（屏蔽） | 1d? | 2017-04-10 | 2017-04-11 | 107 | 4d | 0d |  | 刘飞 | 8h |
| 109 | 2.10.4 | 打分规则设置 | 1d? | 2017-04-11 | 2017-04-12 | 108 | 4d |  |  | 刘飞 | 8h |
| 110 | 2.11 | **主面板信息优化** | 7d? | 2017-04-17 | 2017-04-26 | 105 |  |  |  | 刘飞 | 88h |
| 111 | 2.11.1 | 用户登录信息 | 1d? | 2017-04-17 | 2017-04-18 | 109 | 3d | 0d |  | 刘飞 | 8h |
| 112 | 2.11.2 | 待办事项 | 1d? | 2017-04-18 | 2017-04-19 | 111 | 3d | 0d |  | 刘飞 | 8h |
| 113 | 2.11.3 | 统计数据展示 | 1d? | 2017-04-19 | 2017-04-20 | 112 | 3d | 0d |  | 刘飞 | 8h |
| 114 | 2.11.4 | 数据分析展示面板 | 1d? | 2017-04-20 | 2017-04-21 | 113 | 3d |  |  | 刘飞 | 8h |
| 115 | 2.12 | **搜索** | 9d? | 2016-12-29 | 2017-01-11 |  |  |  |  | 文玉杰 | 96h |
| 116 | 2.12.1 | 首页搜索框（模糊搜索） | 1d? | 2016-12-30 | 2017-01-03 |  | 5d | 0d | start no earlier than 2016-12-30 | 文玉杰 | 8h |
| 117 | 2.12.2 | 关键字搜索、组合搜索 | 1d? | 2017-01-03 | 2017-01-04 | 116 | 5d | 0d |  | 文玉杰 | 8h |
| 118 | 2.12.3 | 搜索结果页面 | 1d? | 2017-01-04 | 2017-01-05 | 117 | 5d |  |  | 文玉杰 | 8h |
| 119 | 2.13 | **蜂享购对接 （加入投资兑换）** | 5d? | 2017-01-11 | 2017-01-18 | 115 |  |  |  | 文玉杰 | 56h |
| 120 | 2.13.1 | 商品详情页 0元购 | 1d? | 2017-01-11 | 2017-01-12 |  | 3d | 0d |  | 文玉杰 | 8h |
| 121 | 2.13.2 | 0元购详情页 | 1d? | 2017-01-12 | 2017-01-13 | 120 | 3d |  |  | 文玉杰 | 8h |
| 122 | 2.14 | **订单** | 13d? | 2017-01-18 | 2017-02-09 | 119 |  |  |  | 文玉杰 | 152h |
| 123 | 2.14.1 | 我的订单 | 1d? | 2017-01-18 | 2017-01-19 |  | 7d | 0d |  | 文玉杰 | 8h |
| 124 | 2.14.2 | 订单支付 | 1d? | 2017-01-19 | 2017-01-20 | 123 | 7d | 0d |  | 文玉杰 | 8h |
| 125 | 2.14.3 | 订单评价（商品、店铺打分和文字评价） | 1d? | 2017-01-20 | 2017-01-21 | 124 | 7d | 0d |  | 文玉杰 | 8h |
| 126 | 2.14.4 | 退款、退换货 | 1d? | 2017-01-21 | 2017-01-23 | 125 | 7d | 0d |  | 文玉杰 | 8h |
| 127 | 2.14.5 | 订单回收站 | 1d? | 2017-01-23 | 2017-01-24 | 126 | 7d | 0d |  | 文玉杰 | 8h |
| 128 | 2.14.6 | 订单物流跟踪 | 1d? | 2017-01-24 | 2017-01-25 | 127 | 7d |  |  | 文玉杰 | 8h |

| ID | WBS | Task | Duration | Start | Finish | Predecessors | Total slack | Free slack | Resources | Work |
| --- | --- | --- | --- | --- | --- | --- | --- | --- | --- | --- |
| 129 | 2.15 | **购物车** | 5d? | 2017-02-09 | 2017-02-16 | 122 |  |  | 文玉杰 | 56h |
| 130 | 2.15.1 | 购物车 | 1d? | 2017-02-09 | 2017-02-10 |  | 3d | 0d | 文玉杰 | 8h |
| 131 | 2.15.2 | 购物车下拉的猜你喜欢商品列表 | 1d? | 2017-02-10 | 2017-02-13 | 130 | 3d |  | 文玉杰 | 8h |
| 132 | 2.16 | **登录与注册** | 4d? | 2017-02-16 | 2017-02-21 | 129 |  |  | 文玉杰 | 56h |
| 133 | 2.16.1 | 登录 | 1d? | 2017-02-16 | 2017-02-17 |  | 1d | 0d | 文玉杰 | 8h |
| 134 | 2.16.2 | 注册 | 1d? | 2017-02-17 | 2017-02-18 | 133 | 1d | 0d | 文玉杰 | 8h |
| 135 | 2.16.3 | 忘记密码 | 1d? | 2017-02-18 | 2017-02-20 | 134 | 1d |  | 文玉杰 | 8h |
| 136 | 2.17 | **店铺** | 10d? | 2017-02-21 | 2017-03-06 | 132 |  |  | 文玉杰 | 112h |
| 137 | 2.17.1 | 店铺展示 | 1d? | 2017-02-21 | 2017-02-22 |  | 6d | 0d | 文玉杰 | 8h |
| 138 | 2.17.2 | 店铺客服 | 1d? | 2017-02-22 | 2017-02-23 | 137 | 6d | 0d | 文玉杰 | 8h |
| 139 | 2.17.3 | 店铺收藏 | 1d? | 2017-02-23 | 2017-02-24 | 138 | 6d | 0d | 文玉杰 | 8h |
| 140 | 2.17.4 | 店铺详情 | 1d? | 2017-02-24 | 2017-02-27 | 139 | 6d |  | 文玉杰 | 8h |
| 141 | 2.18 | **促销&活动** | 16d? | 2017-03-06 | 2017-03-27 | 136 |  |  | 文玉杰 | 168h |
| 142 | 2.18.1 | 省钱趴 | 1d? | 2017-03-06 | 2017-03-07 |  | 11d | 0d | 文玉杰 | 8h |
| 143 | 2.18.2 | 限时购（秒杀） | 1d? | 2017-03-07 | 2017-03-08 | 142 | 11d | 0d | 文玉杰 | 8h |
| 144 | 2.18.3 | 满减 （每满XX减XX） | 1d? | 2017-03-08 | 2017-03-09 | 143 | 11d | 0d | 文玉杰 | 8h |
| 145 | 2.18.4 | 满赠 （结合优惠券） | 1d? | 2017-03-09 | 2017-03-10 | 144 | 11d | 0d | 文玉杰 | 8h |
| 146 | 2.18.5 | 团购 | 1d? | 2017-03-10 | 2017-03-13 | 145 | 11d |  | 文玉杰 | 8h |
| 147 | 3 | **后台管理** | 25d? | 2017-03-27 | 2017-04-27 |  |  |  | 文玉杰 | 504h |
| 148 | 3.1 | **促销&活动管理优化** | 9d? | 2017-03-27 | 2017-04-06 | 141 |  |  | 文玉杰 | 104h |
| 149 | 3.1.1 | 活动管理方式界面优化 | 1d? | 2017-03-27 | 2017-03-28 |  | 5d | 0d | 文玉杰 | 8h |
| 150 | 3.1.2 | 满减（每满XX减XX）配置 | 1d? | 2017-03-28 | 2017-03-29 | 149 | 5d | 0d | 文玉杰 | 8h |
| 151 | 3.1.3 | 满赠配置（结合优惠券） | 1d? | 2017-03-29 | 2017-03-30 | 150 | 5d | 0d | 文玉杰 | 8h |
| 152 | 3.1.4 | 团购配置 | 1d? | 2017-03-30 | 2017-03-31 | 151 | 5d |  | 文玉杰 | 8h |

| ID | WBS | Task | Duration | Start | Finish | Predecessors | Total slack | Free slack | Constraint | Resources | Work |
| --- | --- | --- | --- | --- | --- | --- | --- | --- | --- | --- | --- |
| 153 | 3.2 | **网站管理** | 9.5d? | 2017-04-06 | 2017-04-18 | 148 |  |  |  | 文玉杰 | 124h |
| 154 | 3.2.1 | 文章分类 | 1d? | 2017-04-06 | 2017-04-07 |  | 3.5d | 0d |  | 文玉杰 | 8h |
| 155 | 3.2.2 | 文章管理 | 1d? | 2017-04-07 | 2017-04-10 | 154 | 3.5d | 0d |  | 文玉杰 | 8h |
| 156 | 3.2.3 | 广告管理 | 1d? | 2017-04-10 | 2017-04-11 | 155 | 3.5d | 0d |  | 文玉杰 | 8h |
| 157 | 3.2.4 | 首页管理 | 1d? | 2017-04-11 | 2017-04-12 | 156 | 3.5d | 0d |  | 文玉杰 | 8h |
| 158 | 3.2.5 | 导航管理 | 1d? | 2017-04-12 | 2017-04-13 | 157 | 3.5d | 0d |  | 文玉杰 | 8h |
| 159 | 3.2.6 | 友情链接管理 | 1d? | 2017-04-13 | 2017-04-14 | 158 | 3.5d |  |  | 文玉杰 | 8h |
| 160 | 3.3 | **会员系统** | 6.5d? | 2017-04-18 | 2017-04-27 | 153 |  |  |  | 文玉杰 | 76h |
| 161 | 3.3.1 | 会员等级设置 | 1d? | 2017-04-18 | 2017-04-19 |  | 3.5d | 0d |  | 文玉杰 | 8h |
| 162 | 3.3.2 | 会员成长值规则设置 | 1d? | 2017-04-19 | 2017-04-20 | 161 | 3.5d | 0d |  | 文玉杰 | 8h |
| 163 | 3.3.3 | 乐币设置 | 1d? | 2017-04-20 | 2017-04-21 | 162 | 3.5d |  |  | 文玉杰 | 8h |
| 164 | 4 | **他她乐PC端接口** | 106.5d? | 2016-12-26 | 2017-05-17 |  |  |  |  | 李丁; 杨忠卫 | 5252h |
| 165 | 4.1 | **重新编写2.0前台所有接口（PC）** | 23d? | 2017-02-07 | 2017-03-08 |  |  |  |  | 李丁; 杨忠卫 | 1072h |
| 166 | 4.1.1 | **登陆注册相关接口** | 5d? | 2017-02-07 | 2017-02-14 |  |  |  |  | 李丁 | 72h |
| 167 | 4.1.1.1 | 登陆接口重写及测试 | 1d? | 2017-02-07 | 2017-02-08 |  | 1d | 0d | start no earlier than 2017-02-07 | 李丁 | 8h |
| 168 | 4.1.1.2 | 注册接口重写及测试 | 1d? | 2017-02-08 | 2017-02-09 | 167 | 1d | 0d |  | 李丁 | 8h |
| 169 | 4.1.1.3 | 忘记密码接口重写及测试 | 1d? | 2017-02-09 | 2017-02-10 | 168 | 1d | 0d |  | 李丁 | 8h |
| 170 | 4.1.1.4 | 发送短信及验证码相关接口 | 1d? | 2017-02-10 | 2017-02-13 | 169 | 1d |  |  | 李丁 | 8h |
| 171 | 4.1.2 | **app首页接口** | 8d? | 2017-02-14 | 2017-02-23 | 166, 169 |  |  |  | 李丁 | 128h |
| 172 | 4.1.2.1 | 首页轮播图接口重写及测试 | 1d? | 2017-02-14 | 2017-02-15 |  | 0d |  |  | 李丁 | 8h |
| 173 | 4.1.2.2 | 新品抢先接口重写及测试 | 1d? | 2017-02-15 | 2017-02-16 | 172 | 0d |  |  | 李丁 | 8h |
| 174 | 4.1.2.3 | 省钱趴接口重写及测试 | 1d? | 2017-02-16 | 2017-02-17 | 173 | 0d |  |  | 李丁 | 8h |
| 175 | 4.1.2.4 | 每日上线接口重写及测试 | 1d? | 2017-02-17 | 2017-02-18 | 174 | 0d |  |  | 李丁 | 8h |
| 176 | 4.1.2.5 | 超实惠接口重写及测试 | 1d? | 2017-02-18 | 2017-02-20 | 175 | 0d |  |  | 李丁 | 8h |
| 177 | 4.1.2.6 | 大牌秀接口重写及测试 | 1d? | 2017-02-20 | 2017-02-21 | 176 | 0d |  |  | 李丁 | 8h |
| 178 | 4.1.2.7 | 特色好货接口重写及测试 | 1d? | 2017-02-21 | 2017-02-22 | 177 | 0d |  |  | 李丁 | 8h |
| 179 | 4.1.2.8 | 为你推荐接口重写及测试 | 1d? | 2017-02-22 | 2017-02-23 | 178 | 0d |  |  | 李丁 | 8h |

| ID | WBS | Task | Duration | Start | Finish | Predecessors | Total slack | Free slack | Resources | Work |
| --- | --- | --- | --- | --- | --- | --- | --- | --- | --- | --- |
| 180 | 4.1.3 | **专题活动页面接口** | 5d? | 2017-02-23 | 2017-03-02 | 171, 179 |  |  | 李丁 | 64h |
| 181 | 4.1.3.1 | 活动页面商品展示接口重写及测试 | 1d? | 2017-02-23 | 2017-02-24 |  | 2d | 0d | 李丁 | 8h |
| 182 | 4.1.3.2 | 秒杀与限时抢活动相关接口 | 1d? | 2017-02-24 | 2017-02-27 | 181 | 2d | 0d | 李丁 | 8h |
| 183 | 4.1.3.3 | 活动页面按字段排序接口重写及测试 | 1d? | 2017-02-27 | 2017-02-28 | 181, 182 | 2d |  | 李丁 | 8h |
| 184 | 4.1.4 | **分类接口** | 3d? | 2017-03-02 | 2017-03-06 | 180 |  |  | 李丁 | 40h |
| 185 | 4.1.4.1 | 分类展示接口 | 1d? | 2017-03-02 | 2017-03-03 |  | 1d | 0d | 李丁 | 8h |
| 186 | 4.1.4.2 | 跨境专区分类特别展示接口 | 1d? | 2017-03-03 | 2017-03-04 | 185 | 1d |  | 李丁 | 8h |
| 187 | 4.1.5 | **搜索接口** | 2d? | 2017-03-06 | 2017-03-08 | 184 |  |  | 李丁 | 32h |
| 188 | 4.1.5.1 | 首页搜索查询接口 | 1d? | 2017-03-06 | 2017-03-07 |  | 0d |  | 李丁 | 8h |
| 189 | 4.1.5.2 | 类目下搜索查询接口 | 1d? | 2017-03-07 | 2017-03-08 | 188 | 0d |  | 李丁 | 8h |
| 190 | 4.1.6 | **商品列表页相关接口** | 7d? | 2017-02-09 | 2017-02-18 |  |  |  | 杨忠卫 | 128h |
| 191 | 4.1.6.1 | 商品列表展示及分页接口 | 1d? | 2017-02-09 | 2017-02-10 |  | -4d | 0d | 杨忠卫 | 8h |
| 192 | 4.1.6.2 | 商品详情页相关接口 | 1d? | 2017-02-10 | 2017-02-13 | 191 | -4d | 0d | 杨忠卫 | 8h |
| 193 | 4.1.6.3 | 商品基础信息相关接口 | 1d? | 2017-02-13 | 2017-02-14 | 192 | -4d | 0d | 杨忠卫 | 8h |
| 194 | 4.1.6.4 | 商品参数选择及库存数量相关接口 | 1d? | 2017-02-14 | 2017-02-15 | 193 | -4d | 0d | 杨忠卫 | 8h |
| 195 | 4.1.6.5 | 商品参与活动及优惠金额相关接口 | 1d? | 2017-02-15 | 2017-02-16 | 194 | -4d | 0d | 杨忠卫 | 8h |
| 196 | 4.1.6.6 | 商品主副图片轮播展示相关接口 | 1d? | 2017-02-16 | 2017-02-17 | 195 | -4d | 0d | 杨忠卫 | 8h |
| 197 | 4.1.6.7 | 商品详细介绍相关接口 | 1d? | 2017-02-17 | 2017-02-18 | 196 | -4d | 0d | 杨忠卫 | 8h |
| 198 | 4.1.6.8 | 商品跳转至订单结算相关接口 | 1d? | 2017-02-18 | 2017-02-20 | 197 | -4d | 0d | 杨忠卫 | 8h |
| 199 | 4.1.6.9 | 商品售后信息相关接口 | 1d? | 2017-02-20 | 2017-02-21 | 198 | -4d | 0d | 杨忠卫 | 8h |
| 200 | 4.1.7 | **购物车相关接口** | 3d? | 2017-02-18 | 2017-02-22 | 190, 199 |  |  | 杨忠卫 | 64h |
| 201 | 4.1.7.1 | 购物车权限控制 | 1d? | 2017-02-18 | 2017-02-20 |  | -2d | 0d | 杨忠卫 | 8h |
| 202 | 4.1.7.2 | 购物车加入功能 | 1d? | 2017-02-20 | 2017-02-21 | 201 | -2d | 0d | 杨忠卫 | 8h |
| 203 | 4.1.7.3 | 购物车编辑相关功能 | 1d? | 2017-02-21 | 2017-02-22 | 202 | -2d | 0d | 杨忠卫 | 8h |
| 204 | 4.1.7.4 | 购物车下推荐商品相关接口 | 1d? | 2017-02-22 | 2017-02-23 | 203 | -2d | 0d | 杨忠卫 | 8h |
| 205 | 4.1.7.5 | 购物车跳转至订单页相关接口 | 1d? | 2017-02-23 | 2017-02-24 | 204 | -2d | 0d | 杨忠卫 | 8h |

| ID | WBS | Task | Duration | Start | Finish | Predecessors | Total slack | Free slack | Constraint | Resources | Work |
| --- | --- | --- | --- | --- | --- | --- | --- | --- | --- | --- | --- |
| 206 | 4.1.8 | **订单相关接口** | 7.5d? | 2017-02-22 | 2017-03-03 | 200 |  |  |  | 杨忠卫 | 116h |
| 207 | 4.1.8.1 | 订单结算页相关接口 | 1d? | 2017-02-22 | 2017-02-23 |  | 0.5d | 0d |  | 杨忠卫 | 8h |
| 208 | 4.1.8.2 | 查看订单相关接口 | 1d? | 2017-02-23 | 2017-02-24 | 207 | 0.5d | 0d |  | 杨忠卫 | 8h |
| 209 | 4.1.8.3 | 订单查询物流相关接口 | 1d? | 2017-02-24 | 2017-02-27 | 208 | 0.5d | 0d |  | 杨忠卫 | 8h |
| 210 | 4.1.8.4 | 支付订单接口 | 1d? | 2017-02-27 | 2017-02-28 | 209 | 0.5d | 0d |  | 杨忠卫 | 8h |
| 211 | 4.1.8.5 | 订单退换货相关接口 | 1d? | 2017-02-28 | 2017-03-01 | 210 | 0.5d | 0d |  | 杨忠卫 | 8h |
| 212 | 4.1.8.6 | 订单确认相关接口 | 1d? | 2017-03-01 | 2017-03-02 | 211 | 0.5d | 0d |  | 杨忠卫 | 8h |
| 213 | 4.1.8.7 | 确认收货相关接口 | 1d? | 2017-03-02 | 2017-03-03 | 212 | 0.5d |  |  | 杨忠卫 | 8h |
| 214 | 4.1.9 | **地址管理相关接口** | 2.5d? | 2017-03-03 | 2017-03-07 | 206 |  |  |  | 杨忠卫 | 60h |
| 215 | 4.1.9.1 | 新增地址相关接口 | 1d? | 2017-03-03 | 2017-03-04 |  | -2.5d | 0d |  | 杨忠卫 | 8h |
| 216 | 4.1.9.2 | 修改地址相关接口 | 1d? | 2017-03-04 | 2017-03-06 | 215 | -2.5d | 0d |  | 杨忠卫 | 8h |
| 217 | 4.1.9.3 | 删除地址相关接口 | 1d? | 2017-03-06 | 2017-03-07 | 216 | -2.5d | 0d |  | 杨忠卫 | 8h |
| 218 | 4.1.9.4 | 默认地址设置相关接口 | 1d? | 2017-03-07 | 2017-03-08 | 217 | -2.5d | 0d |  | 杨忠卫 | 8h |
| 219 | 4.1.9.5 | 地址与订单关联接口 | 1d? | 2017-03-08 | 2017-03-09 | 218 | -2.5d | 0d |  | 杨忠卫 | 8h |
| 220 | 4.2 | **站点设置** | 4d? | 2017-03-09 | 2017-03-15 |  |  |  |  | 李丁 | 48h |
| 221 | 4.2.1 | 新增站点功能实现功能实现及测试 | 1d? | 2017-03-09 | 2017-03-10 |  | 2d | 0d | start no earlier than 2017-03-09 | 李丁 | 8h |
| 222 | 4.2.2 | 站点列表维护功能实现及测试 | 1d? | 2017-03-10 | 2017-03-13 | 221 | 2d |  |  | 李丁 | 8h |
| 223 | 4.3 | **行政地区设置** | 2d? | 2017-03-15 | 2017-03-17 | 220 |  |  |  | 李丁 | 48h |
| 224 | 4.3.1 | 一级地区管理功能实现及测试 | 1d? | 2017-03-15 | 2017-03-16 |  | -2d | 0d |  | 李丁 | 8h |
| 225 | 4.3.2 | 二级地区管理功能实现及测试 | 1d? | 2017-03-16 | 2017-03-17 | 224 | -2d | 0d |  | 李丁 | 8h |
| 226 | 4.3.3 | 三级地区管理功能实现及测试 | 1d? | 2017-03-17 | 2017-03-18 | 225 | -2d | 0d |  | 李丁 | 8h |
| 227 | 4.3.4 | 四级地区管理功能实现及测试 | 1d? | 2017-03-18 | 2017-03-20 | 226 | -2d | 0d |  | 李丁 | 8h |
| 228 | 4.4 | **物流配送优化** | 6d? | 2017-03-17 | 2017-03-24 | 223 |  |  |  | 李丁 | 64h |
| 229 | 4.4.1 | 配送模板管理功能实现及测试 | 1d? | 2017-03-17 | 2017-03-18 |  | 4d | 0d |  | 李丁 | 8h |
| 230 | 4.4.2 | 区域配送管理功能实现及测试 | 1d? | 2017-03-18 | 2017-03-20 | 229 | 4d |  |  | 李丁 | 8h |

| ID | WBS | Task | Duration | Start | Finish | Predecessors | Total slack | Free slack | Constraint | Resources | Work |
| --- | --- | --- | --- | --- | --- | --- | --- | --- | --- | --- | --- |
| 231 | 4.5 | **文章分类** | 3d? | 2017-03-24 | 2017-03-29 | 228 |  |  |  | 李丁 | 40h |
| 232 | 4.5.1 | 增加分类功能实现及测试 | 1d? | 2017-03-24 | 2017-03-27 |  | 1d | 0d |  | 李丁 | 8h |
| 233 | 4.5.2 | 文章分类列表管理功能实现及测试 | 1d? | 2017-03-27 | 2017-03-28 | 232 | 1d |  |  | 李丁 | 8h |
| 234 | 4.6 | **文章管理** | 5d? | 2017-03-29 | 2017-04-04 | 231 |  |  |  | 李丁 | 56h |
| 235 | 4.6.1 | 新增文章功能实现及测试 | 1d? | 2017-03-29 | 2017-03-30 |  | 3d | 0d |  | 李丁 | 8h |
| 236 | 4.6.2 | 文章列表管理功能实现及测试 | 1d? | 2017-03-30 | 2017-03-31 | 235 | 3d |  |  | 李丁 | 8h |
| 237 | 4.7 | **广告管理** | 4.5d? | 2017-04-04 | 2017-04-10 | 234 |  |  |  | 李丁 | 52h |
| 238 | 4.7.1 | 增加广告位功能实现及测试 | 1d? | 2017-04-04 | 2017-04-05 |  | 2.5d | 0d |  | 李丁 | 8h |
| 239 | 4.7.2 | 广告位列表管理功能实现及测试 | 1d? | 2017-04-05 | 2017-04-06 | 238 | 2.5d |  |  | 李丁 | 8h |
| 240 | 4.8 | **首页管理** | 5d? | 2017-04-10 | 2017-04-15 | 237 |  |  |  | 李丁 | 56h |
| 241 | 4.8.1 | 增加栏目功能实现及测试 | 1d? | 2017-04-10 | 2017-04-11 |  | 3d | 0d |  | 李丁 | 8h |
| 242 | 4.8.2 | 栏目列表维护功能实现及测试 | 1d? | 2017-04-11 | 2017-04-12 | 241 | 3d |  |  | 李丁 | 8h |
| 243 | 4.9 | **导航管理** | 5d? | 2017-04-15 | 2017-04-21 | 240 |  |  |  | 李丁 | 56h |
| 244 | 4.9.1 | 增加导航功能实现及测试 | 1d? | 2017-04-15 | 2017-04-17 |  | 3d | 0d |  | 李丁 | 8h |
| 245 | 4.9.2 | 导航列表维护功能实现及测试 | 1d? | 2017-04-17 | 2017-04-18 | 244 | 3d |  |  | 李丁 | 8h |
| 246 | 4.10 | **友情链接管理** | 4d? | 2017-04-21 | 2017-04-27 | 243 |  |  |  | 李丁 | 48h |
| 247 | 4.10.1 | 增加友情链接功能实现及测试 | 1d? | 2017-04-21 | 2017-04-24 |  | 2d | 0d |  | 李丁 | 8h |
| 248 | 4.10.2 | 友情链接列表维护功能实现及测试 | 1d? | 2017-04-24 | 2017-04-25 | 247 | 2d |  |  | 李丁 | 8h |
| 249 | 4.11 | **商品评价** | 9.5d? | 2016-12-26 | 2017-01-07 |  |  |  |  | 胡东 | 108h |
| 250 | 4.11.1 | 商品评价功能 | 1d? | 2016-12-26 | 2016-12-27 |  | 5.5d | 0d | start no earlier than 2016-12-26 | 胡东 | 8h |
| 251 | 4.11.2 | 商品评价图片上传功能 | 1d? | 2016-12-27 | 2016-12-28 | 250 | 5.5d | 0d |  | 胡东 | 8h |
| 252 | 4.11.3 | 评价审核 | 1d? | 2016-12-28 | 2016-12-29 | 251 | 5.5d | 0d |  | 胡东 | 8h |
| 253 | 4.11.4 | 评价查询功能 | 1d? | 2016-12-29 | 2016-12-30 | 252 | 5.5d | 5d |  | 胡东 | 8h |
| 254 | 4.12 | **订单管理** | 23d? | 2017-01-07 | 2017-02-13 |  |  |  |  | 胡东 | 240h |
| 255 | 4.12.1 | 多状态订单查询 | 1d? | 2017-01-07 | 2017-01-09 | 253 | 16d | 0d |  | 胡东 | 8h |
| 256 | 4.12.2 | 多状态订单统计 | 1d? | 2017-01-09 | 2017-01-10 | 255 | 16d | 0d |  | 胡东 | 8h |
| 257 | 4.12.3 | 订单详情查看 | 1d? | 2017-01-10 | 2017-01-11 | 256 | 16d | 0d |  | 胡东 | 8h |
| 258 | 4.12.4 | 订单取消\删除\收货功能 | 1d? | 2017-01-11 | 2017-01-12 | 257 | 16d | 0d |  | 胡东 | 8h |
| 259 | 4.12.5 | 查看物流功能 | 1d? | 2017-01-12 | 2017-01-13 | 258 | 16d | 0d |  | 胡东 | 8h |
| 260 | 4.12.6 | 订单回收站 | 1d? | 2017-01-13 | 2017-01-16 | 259 | 16d | 0d |  | 胡东 | 8h |
| 261 | 4.12.7 | 订单活动加优惠券计算规则 | 1d? | 2017-01-16 | 2017-01-17 | 259, 260 | 16d | 15.5d |  | 胡东 | 8h |

| ID | WBS | Task | Duration | Start | Finish | Predecessors | Total slack | Free slack | Constraint | Resources | Work |
| --- | --- | --- | --- | --- | --- | --- | --- | --- | --- | --- | --- |
| 262 | 4.13 | **地址管理** | 4d? | 2017-02-10 | 2017-02-16 | 261 |  |  |  | 胡东 | 48h |
| 263 | 4.13.1 | 新增地址 | 1d? | 2017-02-10 | 2017-02-13 |  | 2d | 0d |  | 胡东 | 8h |
| 264 | 4.13.2 | 编辑、修改、删除地址 | 1d? | 2017-02-13 | 2017-02-14 | 263 | 2d |  |  | 胡东 | 8h |
| 265 | 4.14 | **优惠券功能app和pc** | 23d? | 2017-02-16 | 2017-03-17 | 262 |  |  |  | 胡东 | 224h |
| 266 | 4.14.1 | 创建多种类型优惠券 | 1d? | 2017-02-16 | 2017-02-17 |  | 18d | 0d |  | 胡东 | 8h |
| 267 | 4.14.2 | 优惠券领券 | 1d? | 2017-02-17 | 2017-02-18 | 266 | 18d | 0d |  | 胡东 | 8h |
| 268 | 4.14.3 | 优惠券使用功能 | 1d? | 2017-02-18 | 2017-02-20 | 267 | 18d | 0d |  | 胡东 | 8h |
| 269 | 4.14.4 | 优惠券订单计算价格功能 | 1d? | 2017-02-20 | 2017-02-21 | 268 | 18d | 0d |  | 胡东 | 8h |
| 270 | 4.14.5 | 满赠功能 | 1d? | 2017-02-21 | 2017-02-22 | 269 | 18d |  |  | 胡东 | 8h |
| 271 | 4.15 | **供应商管理** | 4d? | 2017-03-17 | 2017-03-22 | 265 |  |  |  | 胡东 | 48h |
| 272 | 4.15.1 | 供应商维护 | 1d? | 2017-03-17 | 2017-03-18 |  | 2d | 0d |  | 胡东 | 8h |
| 273 | 4.15.2 | 供应商编辑、修改、删除功能 | 1d? | 2017-03-18 | 2017-03-20 | 272 | 2d |  |  | 胡东 | 8h |
| 274 | 4.16 | **拆单功能app和pc** | 6d? | 2017-03-22 | 2017-03-30 | 271 |  |  |  | 胡东 | 64h |
| 275 | 4.16.1 | 根据供应商进行拆单 | 1d? | 2017-03-22 | 2017-03-23 |  | 4d | 0d |  | 胡东 | 8h |
| 276 | 4.16.2 | 优化订单功能 | 1d? | 2017-03-23 | 2017-03-24 | 275 | 4d |  |  | 胡东 | 8h |
| 277 | 4.17 | **优化及其他功能** | 13d? | 2017-03-30 | 2017-04-15 | 276 |  |  |  | 胡东 | 128h |
| 278 | 4.17.1 | 商品批量导入功能 | 1d? | 2017-03-30 | 2017-03-31 |  | 10d | 0d |  | 胡东 | 8h |
| 279 | 4.17.2 | 订单号生成规则优化 | 1d? | 2017-03-31 | 2017-04-01 | 278 | 10d | 0d |  | 胡东 | 8h |
| 280 | 4.17.3 | 秒杀功能优化解决爆库存问题 | 1d? | 2017-04-01 | 2017-04-03 | 279 | 10d |  |  | 胡东 | 8h |
| 281 | 4.18 | **钱包管理** | 25d? | 2017-04-15 | 2017-05-17 | 280 |  |  |  | 杨绍振; 胡东 | 480h |
| 282 | 4.18.1 | 收支明细 | 1d? | 2017-04-15 | 2017-04-17 |  | 20d | 0d |  | 胡东 | 8h |
| 283 | 4.18.2 | 充值明细 | 1d? | 2017-04-17 | 2017-04-18 | 282 | 20d | 0d |  | 胡东 | 8h |
| 284 | 4.18.3 | 充值功能 | 1d? | 2017-04-18 | 2017-04-19 | 283 | 20d | 0d |  | 胡东 | 8h |
| 285 | 4.18.4 | 短信验证支付功能 | 1d? | 2017-04-10 | 2017-04-10 |  | 27.62d | 4.62d | start no earlier than 2017-04-08 | 胡东 | 8h |
| 286 | 4.18.5 | 银行卡绑定 | 1d? | 2017-04-15 | 2017-04-17 | 285 | 23d | 0d |  | 胡东 | 8h |
| 287 | 4.18.6 | 支付密码设置及找回功能 | 1d? | 2017-04-17 | 2017-04-18 | 286 | 23d |  |  | 胡东 | 8h |
| 288 | 4.18.7 | 钱包支付 | 1d? | 2017-04-19 | 2017-04-20 | 284 | 20d | 0d |  | 杨绍振 | 8h |
| 289 | 4.18.8 | 提现功能 | 1d? | 2017-04-20 | 2017-04-21 | 288 | 20d |  |  | 杨绍振 | 8h |
| 290 | 4.18.9 | 快捷支付功能相关实现 | 1d? | 2017-04-15 | 2017-04-17 | 285 | 23d | 3d |  | 杨绍振 | 8h |
| 291 | 4.18.10 | 钱包资金安全相关设置 | 1d? | 2017-04-20 | 2017-04-21 | 288, 290 | 20d |  |  | 杨绍振 | 8h |

| ID | WBS | Task | Duration | Start | Finish | Predecessors | Total slack | Free slack | Constraint | Resources | Work |
| --- | --- | --- | --- | --- | --- | --- | --- | --- | --- | --- | --- |
| 292 | 4.19 | **会员等级设置** | 8.5d? | 2017-02-10 | 2017-02-21 |  |  |  |  | 杨忠卫 | 100h |
| 293 | 4.19.1 | 会员等级设置 | 1d? | 2017-02-08 | 2017-02-09 |  | 6.5d | 1d | start no earlier than 2017-02-08 | 杨忠卫 | 8h |
| 294 | 4.19.2 | 会员积分赠送规则 | 1d? | 2017-02-10 | 2017-02-13 | 293 | 5.5d | 0d |  | 杨忠卫 | 8h |
| 295 | 4.19.3 | 会员积分清零设置 | 1d? | 2017-02-13 | 2017-02-14 | 294 | 5.5d | 0d |  | 杨忠卫 | 8h |
| 296 | 4.19.4 | 会员等级优惠设置 | 1d? | 2017-02-14 | 2017-02-15 | 293, 295 | 5.5d |  |  | 杨忠卫 | 8h |
| 297 | 4.20 | **乐币设置** | 16d? | 2017-02-21 | 2017-03-14 | 292 |  |  |  | 杨忠卫 | 168h |
| 298 | 4.20.1 | 乐币设置 | 1d? | 2017-02-21 | 2017-02-22 |  | 11d | 0d |  | 杨忠卫 | 8h |
| 299 | 4.20.2 | 乐币消费规则 | 1d? | 2017-02-22 | 2017-02-23 | 298 | 11d | 0d |  | 杨忠卫 | 8h |
| 300 | 4.20.3 | 乐币抵扣规则 | 1d? | 2017-02-23 | 2017-02-24 | 299 | 11d | 0d |  | 杨忠卫 | 8h |
| 301 | 4.20.4 | 取消订单乐币退还规则 | 1d? | 2017-02-24 | 2017-02-27 | 300 | 11d | 0d |  | 杨忠卫 | 8h |
| 302 | 4.20.5 | 乐币赠送相关接口 | 1d? | 2017-02-27 | 2017-02-28 | 301 | 11d |  |  | 杨忠卫 | 8h |
| 303 | 4.21 | **用户登录信息** | 10d? | 2017-03-14 | 2017-03-27 | 297 |  |  |  | 杨忠卫 | 120h |
| 304 | 4.21.1 | 用户登录个人资料信息 | 1d? | 2017-03-14 | 2017-03-15 |  | 5d | 0d |  | 杨忠卫 | 8h |
| 305 | 4.21.2 | 用户上传个人图片信息 | 1d? | 2017-03-15 | 2017-03-16 | 304 | 5d | 0d |  | 杨忠卫 | 8h |
| 306 | 4.21.3 | 用户积分成长情况展示 | 1d? | 2017-03-16 | 2017-03-17 | 305 | 5d | 0d |  | 杨忠卫 | 8h |
| 307 | 4.21.4 | 用户乐币使用情况详情 | 1d? | 2017-03-17 | 2017-03-18 | 306 | 5d | 0d |  | 杨忠卫 | 8h |
| 308 | 4.21.5 | 用户代办事项 | 1d? | 2017-03-18 | 2017-03-20 | 307 | 5d |  |  | 杨忠卫 | 8h |
| 309 | 4.22 | **待办事项** | 4.5d? | 2017-03-27 | 2017-04-01 | 303 |  |  |  | 杨忠卫 | 52h |
| 310 | 4.22.1 | 后台待办事项资料展示 | 1d? | 2017-03-27 | 2017-03-28 |  | 2.5d | 0d |  | 杨忠卫 | 8h |
| 311 | 4.22.2 | 待办事项业务处理 | 1d? | 2017-03-28 | 2017-03-29 | 310 | 2.5d |  |  | 杨忠卫 | 8h |
| 312 | 4.23 | **统计数据** | 7d? | 2017-04-01 | 2017-04-11 | 309 |  |  |  | 杨忠卫 | 80h |
| 313 | 4.23.1 | 统计数据展示 | 1d? | 2017-04-01 | 2017-04-03 |  | 4d | 0d |  | 杨忠卫 | 8h |
| 314 | 4.23.2 | 数据分析展示面板 | 1d? | 2017-04-03 | 2017-04-04 | 313 | 4d | 0d |  | 杨忠卫 | 8h |
| 315 | 4.23.3 | 统计数据导出功能 | 1d? | 2017-04-04 | 2017-04-05 | 314 | 4d |  |  | 杨忠卫 | 8h |
| 316 | 4.24 | 关键字搜索、组合搜索 | 1d? | 2017-04-11 | 2017-04-12 | 315, 312 | 6.5d | 3d |  | 杨忠卫 | 8h |

| ID | WBS | Task | Duration | Start | Finish | Predecessors | Total slack | Free slack | Resources | Work |
| --- | --- | --- | --- | --- | --- | --- | --- | --- | --- | --- |
| 317 | 4.25 | **商品支持及售后** | 10.5d? | 2017-04-15 | 2017-04-28 | 316 |  |  | 杨忠卫 | 140h |
| 318 | 4.25.1 | 售后信息资料录入 | 1d? | 2017-04-15 | 2017-04-17 |  | 3.5d | 0d | 杨忠卫 | 8h |
| 319 | 4.25.2 | 售后信息资料及图片上传 | 1d? | 2017-04-17 | 2017-04-18 | 318 | 3.5d | 0d | 杨忠卫 | 8h |
| 320 | 4.25.3 | 售后信息前台展示相关接口 | 1d? | 2017-04-18 | 2017-04-19 | 319 | 3.5d | 0d | 杨忠卫 | 8h |
| 321 | 4.25.4 | 申请单查询 | 1d? | 2017-04-19 | 2017-04-20 | 320 | 3.5d | 0d | 杨忠卫 | 8h |
| 322 | 4.25.5 | 售后单申请 | 1d? | 2017-04-20 | 2017-04-21 | 321 | 3.5d | 0d | 杨忠卫 | 8h |
| 323 | 4.25.6 | 售后进度 | 1d? | 2017-04-21 | 2017-04-24 | 322 | 3.5d | 0d | 杨忠卫 | 8h |
| 324 | 4.25.7 | 物流功能 | 1d? | 2017-04-24 | 2017-04-25 | 323 | 3.5d |  | 杨忠卫 | 8h |
